# Planning_Project

Schedule from MS Project, 2014-09-08 to 2014-11-07, A marks actual dates.

## Calendars

- Standaard: Mon-Fri 08:00-12:00, 13:00-17:00; Sat-Sun off. Exceptions (off unless hours are given): 2014-10-20 to 2014-10-26 (Herfst vakantie).

## Resources

| Resource |
| --- |
| Marco Havermans |
| Pieter Hoek |
| Kevin Ly |

## Schedule

| ID | WBS | Task | Duration | Start | Finish | Predecessors | Complete | Remaining | Total slack | Free slack | Constraint |
| --- | --- | --- | --- | --- | --- | --- | --- | --- | --- | --- | --- |
| 1 | 1 | **Inception Phase** | 3.88d | 2014-09-08 13:20 A | 2014-09-19 10:40 |  | 58% | 1.65d | 3.29d | 0.71d |  |
| 2 | 1.1 | Interview voorbereiden | 7h | 2014-09-08 13:20 A | 2014-09-10 17:00 A |  | 100% |  |  |  | finish no earlier than 2014-09-10 17:00 |
| 3 | 1.2 | Intervies houden (2x Engels) | 2h | 2014-09-10 08:00 A | 2014-09-11 10:40 A | 2 | 100% |  |  |  |  |
| 4 | 1.3 | Gespreksverslagen terugkoppelen | 2h | 2014-09-12 08:40 | 2014-09-12 11:00 | 2, 3 |  |  | 1.08d | 0d | start no earlier than 2014-09-12 08:00 |
| 5 | 1.4 | Hernieuwde opdracht | 11.33h | 2014-09-12 08:00 A | 2014-09-17 13:40 | 4 | 94% | 0.67h | 0d |  |  |
| 6 | 1.5 | Prototype van schermen | 7h | 2014-09-15 08:00 A | 2014-09-17 17:00 A | 5 | 100% |  |  |  | finish no earlier than 2014-09-17 17:00 |
| 7 | 1.6 | Offerte uitbregen | 7h | 2014-09-17 13:40 | 2014-09-18 12:40 | 5 |  |  | 3.5d |  | start no earlier than 2014-09-17 08:00 |
| 8 | 1.7 | Vergadering met agenda en notulen | 1h | 2014-09-18 08:40 | 2014-09-18 09:40 |  |  |  | 3.83d |  | start no earlier than 2014-09-18 08:00 |
| 9 | 1.8 | Plan van aanpak, inclusief risicoanalyse (Engels) | 11.33h | 2014-09-12 08:00 A | 2014-09-18 11:20 | 5 | 50% | 5.67h | 3.67d |  |  |
| 10 | 1.9 | Globale planning voor het gehele project | 2h | 2014-09-15 13:20 A | 2014-09-15 15:40 A |  | 100% |  |  |  | start no earlier than 2014-09-15 08:00 |
| 11 | 1.10 | Functioneel ontwerp inclusief taakverdeling in MS-Project (Engels) | 1h | 2014-09-17 13:20 | 2014-09-17 14:20 |  |  |  | 3.29d | 0d | start no earlier than 2014-09-17 08:00 |
| 12 | 1.11 | Use-Case Diagrammen | 2h | 2014-09-17 14:20 | 2014-09-17 16:40 | 11 |  |  | 3.29d | 0d | start no earlier than 2014-09-17 08:00 |
| 13 | 1.12 | Use-case templates | 2h | 2014-09-17 16:40 | 2014-09-18 10:00 | 11, 12 |  |  | 3.29d | 0d | start no earlier than 2014-09-17 08:00 |
| 14 | 1.13 | Activiteitendiagrammen | 4h | 2014-09-18 10:20 | 2014-09-19 10:40 | 13 |  |  | 3.29d |  | start no earlier than 2014-09-18 08:00 |
| 15 | 2 | **Elaboration Phase** | 2.25d | 2014-09-22 13:20 | 2014-09-26 17:00 | 1 |  |  | 2.46d | 0.42d |  |
| 16 | 2.1 | Technisch Ontwerp inclusief taakverdeling in MS-Project (Engels) | 2h | 2014-09-22 13:20 | 2014-09-22 15:40 |  |  |  | 2.58d | 0d | start no earlier than 2014-09-22 08:00 |
| 17 | 2.2 | Modeldictionary | 2h | 2014-09-22 15:40 | 2014-09-24 13:40 | 16 |  |  | 2.58d | 0d | start no earlier than 2014-09-22 08:00 |
| 18 | 2.3 | Klassendiagram | 3h | 2014-09-24 13:40 | 2014-09-24 17:00 | 17 |  |  | 2.58d | 0d | finish no earlier than 2014-09-24 17:00 |
| 19 | 2.4 | Datadictionary | 3h | 2014-09-24 17:00 | 2014-09-25 11:40 | 18 |  |  | 2.58d | 0d | finish no earlier than 2014-09-24 17:00 |
| 20 | 2.5 | Sequentiediagrammen | 2h | 2014-09-25 11:40 | 2014-09-26 09:40 | 19 |  |  | 2.58d | 0d | finish no earlier than 2014-09-25 17:00 |
| 21 | 2.6 | Taakverdeling ontwikkelomgeving | 2h | 2014-09-26 09:40 | 2014-09-26 12:00 | 20 |  |  | 2.58d | 0.12d | start no earlier than 2014-09-25 08:00 |
| 22 | 2.7 | Hard- en software van de ingerichte ontwikkelomgeving | 3h | 2014-09-26 13:40 | 2014-09-26 17:00 | 21 |  |  | 2.46d |  | finish no earlier than 2014-09-26 17:00 |
| 23 | 3 | **Construction Phase** | 8.79d | 2014-09-29 16:40 | 2014-10-31 17:20 | 15 |  |  | 2d | 0d |  |
| 24 | 3.1 | Het genormaliseerde databaseontwerp | 4h | 2014-09-29 16:40 | 2014-10-01 17:00 |  |  |  | 2.04d | 0d | finish no earlier than 2014-10-01 17:00 |
| 25 | 3.2 | De database (gebouwd) | 4h | 2014-10-01 17:00 | 2014-10-02 17:00 | 24 |  |  | 2.04d | 0d | finish no earlier than 2014-10-02 17:00 |
| 26 | 3.3 | Werkende solution | 51h | 2014-10-03 08:40 | 2014-10-29 17:00 | 25 |  |  | 2.04d | 0.04d | finish no earlier than 2014-10-29 17:00 |
| 27 | 3.4 | Functioneel-technische acceptatietest maken | 4h | 2014-10-30 08:40 | 2014-10-31 09:00 | 26 |  |  | 2d | 0d | start no earlier than 2014-10-30 08:00 |
| 28 | 3.5 | Functioneel-technische acceptatietest uitvoeren | 7h | 2014-10-31 09:00 | 2014-10-31 17:20 | 27 |  |  | 2d |  | finish no earlier than 2014-10-31 17:00 |

| ID | WBS | Task | Duration | Start | Finish | Predecessors | Total slack | Constraint |
| --- | --- | --- | --- | --- | --- | --- | --- | --- |
| 29 | 4 | **Transition Phase** | 2.25d | 2014-11-03 13:20 | 2014-11-07 17:00 | 23 | 0d |  |
| 30 | 4.1 | Een volledig werken systeem. Gerapporteerde bugs zijn opgelost. | 2h | 2014-11-03 13:20 | 2014-11-03 15:40 |  | 2d | start no earlier than 2014-11-03 08:00 |
| 31 | 4.2 | Gebruikershandleiding (Engels) | 2h | 2014-11-05 14:40 | 2014-11-05 17:00 |  | 1.38d | finish no earlier than 2014-11-05 17:00 |
| 32 | 4.3 | Projectrapport ( = alle documentatie op volgorde; inclusief notulen) | 2h | 2014-11-05 14:40 | 2014-11-05 17:00 |  | 1.38d | finish no earlier than 2014-11-05 17:00 |
| 33 | 4.4 | Teamrapport ( = groeps- en individuele reflectie ) | 2h | 2014-11-05 14:40 | 2014-11-05 17:00 |  | 1.38d | finish no earlier than 2014-11-05 17:00 |
| 34 | 4.5 | Presentatie (in het engels) | 1h | 2014-11-07 16:00 | 2014-11-07 17:00 |  | 0d | finish no earlier than 2014-11-07 17:00 |
| 35 | 4.6 | Logboek Voortgangsbewaking en Samenwerking | 1h | 2014-11-03 13:20 | 2014-11-03 14:20 |  | 2.12d | start no earlier than 2014-11-03 08:00 |
